# Tigers

Schedule from MS Project, 2010-04-15 to 2010-10-25, status date 2010-06-03, A marks actual dates.
Home

## Calendars

- Standard: Mon-Fri 08:00-12:00, 13:00-17:00; Sat-Sun off. Exceptions (off unless hours are given): 2010-06-07 to 2010-07-25 (Semester Break), 2010-08-11 (Exhibition Holiday), 2010-09-27 to 2010-10-02 (Mid semester Break).

## Resources

| Resource |
| --- |
| Jane |
| Xing |
| Nicholas |
| Sean |
| Justin |
| Dell |
| Group |
| individual |
| rotation |
| peron requesting change |
| person requesting change |
| Dell & key stakeholder |
| Justin & Group |
| Dell & Group |
| Xing & Group |

## Schedule

| ID | WBS | Task | Duration | Start | Finish | Predecessors | Complete | Remaining | Baseline start | Baseline finish | Baseline duration | Total slack | Resources | Work | Actual work |
| --- | --- | --- | --- | --- | --- | --- | --- | --- | --- | --- | --- | --- | --- | --- | --- |
| 1 | 1 | **0 TiGERS Tiffany Goldmine Environmental Management Report System** | 97d | 2010-04-15 A | 2010-10-25 |  | 56% | 42.36d | 2010-04-15 | 2010-10-25 | 97d | 0d |  | 8632h | 3142.58h |
| 2 | 1.1 | **1. Planning** | 35d | 2010-04-15 A | 2010-06-02 |  | 99% | 0d | 2010-04-15 | 2010-09-07 | 68d | 0d | Group | 2272h | 1848h |
| 3 | 1.1.1 | 1.1 Project Charter | 5d | 2010-04-15 A | 2010-04-21 A |  | 100% |  | 2010-04-15 | 2010-04-21 | 5d |  | Dell; Jane | 80h | 80h |
| 4 | 1.1.2 | **1.2 Project Plan** | 10d | 2010-04-23 A | 2010-05-06 | 3 | 99% | 0d | 2010-04-15 | 2010-09-07 | 68d | 0d | Group | 720h | 576h |
| 5 | 1.1.2.1 | 1.2.1 Project organization | 2w | 2010-04-23 A | 2010-05-06 A |  | 100% |  | 2010-04-23 | 2010-05-06 | 3w |  | Sean; Nicholas | 160h | 160h |
| 6 | 1.1.2.2 | 1.2.2 Management and Technical approaches | 2w | 2010-04-23 A | 2010-05-06 A | 5SS | 100% |  | 2010-04-23 | 2010-05-06 | 3w |  | Xing; Nicholas | 160h | 160h |
| 7 | 1.1.2.3 | **1.2.3 Work to be Done** | 10d | 2010-04-23 A | 2010-05-06 |  | 99% | 0d | 2010-04-15 | 2010-05-26 | 30d | 0d | Sean; Justin | 320h | 176h |
| 8 | 1.1.2.3.1 | 1.2.3.1 Work Breakdown Structure | 1w | 2010-04-23 A | 2010-04-29 A | 6SS | 100% |  | 2010-04-23 | 2010-04-29 | 3w |  | Sean; Justin | 80h | 80h |
| 9 | 1.1.2.3.2 | 1.2.3.2 Statement of Work | 1w | 2010-04-30 A | 2010-05-06 A | 8 | 100% |  | 2010-04-30 | 2010-05-06 | 3w |  | Sean; Justin | 80h | 80h |
| 10 | 1.1.3 | **1.3 Software Requirements Specification** | 18d | 2010-04-27 A | 2010-05-20 A |  | 100% |  | 2010-05-07 | 2010-05-20 | 7.5d |  |  | 544h | 544h |
| 11 | 1.1.3.1 | 1.3.1 Introduction | 2d | 2010-05-07 A | 2010-05-10 A |  | 100% |  | 2010-05-07 | 2010-05-10 | 0d? |  | Nicholas | 16h | 16h |
| 12 | 1.1.3.2 | **1.3.2 Use Case Specifications** | 18d | 2010-04-27 A | 2010-05-20 A |  | 100% |  | 2010-05-07 | 2010-05-20 | 7.5d |  |  | 208h | 208h |
| 13 | 1.1.3.2.1 | 1.3.2.1 Use Case Diagrams | 3.2w | 2010-04-27 A | 2010-05-20 A | 11SS | 100% |  | 2010-05-07 | 2010-05-20 | 1.5w |  | Jane | 128h | 128h |
| 14 | 1.1.3.2.2 | 1.3.2.2 Use Case Description | 2w | 2010-05-07 A | 2010-05-20 A | 13SS | 100% |  | 2010-05-07 | 2010-05-20 | 2d |  | Jane | 80h | 80h |
| 15 | 1.1.3.3 | 1.3.3 Supplementary Specifications | 2w | 2010-05-07 A | 2010-05-20 A | 14SS | 100% |  | 2010-05-07 | 2010-05-20 | 1w |  | Justin; Sean | 160h | 160h |
| 16 | 1.1.3.4 | 1.3.4 Project Glossary | 2w | 2010-05-07 A | 2010-05-20 A | 15SS | 100% |  | 2010-05-07 | 2010-05-20 | 1w |  | Xing | 80h | 80h |
| 17 | 1.1.3.5 | 1.3.5 Sample Reports | 2w | 2010-05-07 A | 2010-05-20 A | 16SS | 100% |  | 2010-05-07 | 2010-05-20 | 1w |  | Xing | 80h | 80h |
| 18 | 1.1.4 | **1.4 Design Planning** | 9d | 2010-05-21 A | 2010-06-02 A |  | 100% |  | 2010-04-19 | 2010-05-17 | 21d |  |  | 448h | 448h |
| 19 | 1.1.4.1 | **1.4.1 Database Design Specification Planning** | 8d | 2010-05-21 A | 2010-06-01 A |  | 100% |  | 2010-04-19 | 2010-05-03 | 10.5d |  |  | 112h | 112h |
| 20 | 1.1.4.1.1 | 1.4.1.1 Plan Scripts | 2d | 2010-05-21 A | 2010-05-24 A | 14 | 100% |  | 2010-04-19 | 2010-04-20 | 2d |  | Nicholas | 16h | 16h |
| 21 | 1.1.4.1.2 | 1.4.1.2 Plan ER Diagram | 2d | 2010-05-21 A | 2010-05-24 A | 13 | 100% |  | 2010-04-26 | 2010-04-28 | 2d |  | Jane | 16h | 16h |
| 22 | 1.1.4.1.3 | 1.4.1.3 Plan Table Mapping | 4d | 2010-05-25 A | 2010-05-28 A | 21 | 100% |  | 2010-04-28 | 2010-05-03 | 3d |  | Jane | 32h | 32h |
| 23 | 1.1.4.1.4 | 1.4.1.4 Plan Normalisation | 2d | 2010-05-31 A | 2010-06-01 A | 14 | 100% |  | 2010-04-19 | 2010-04-19 | 1d |  | Jane | 16h | 16h |
| 24 | 1.1.4.1.5 | 1.4.1.5 Plan Queries and Triggers | 2d | 2010-05-21 A | 2010-05-24 A | 14 | 100% |  | 2010-04-19 | 2010-04-20 | 2d |  | Justin; Sean | 32h | 32h |

| ID | WBS | Task | Duration | Start | Finish | Predecessors | Complete | Baseline start | Baseline finish | Baseline duration | Resources | Work | Actual work |
| --- | --- | --- | --- | --- | --- | --- | --- | --- | --- | --- | --- | --- | --- |
| 25 | 1.1.4.2 | **1.4.2 Web Interface Design Specification Planning** | 9d | 2010-05-21 A | 2010-06-02 A | 14 | 100% | 2010-04-19 | 2010-04-26 | 6d |  | 72h | 72h |
| 26 | 1.1.4.2.1 | 1.4.2.1 Plan Forms | 5d | 2010-05-21 A | 2010-05-27 A | 14 | 100% | 2010-04-19 | 2010-04-23 | 5d | Dell | 40h | 40h |
| 27 | 1.1.4.2.2 | 1.4.2.2 Plan Reports | 4d | 2010-05-28 A | 2010-06-02 A | 17, 14 | 100% | 2010-04-22 | 2010-04-26 | 3d | Xing | 32h | 32h |
| 28 | 1.1.4.3 | **1.4.3 Backend Design Specification Planning** | 5d | 2010-05-21 A | 2010-05-27 A | 14 | 100% | 2010-04-19 | 2010-04-23 | 5d |  | 72h | 72h |
| 29 | 1.1.4.3.1 | 1.4.3.1 Plan Data Flow | 3d | 2010-05-25 A | 2010-05-27 A | 14 | 100% | 2010-04-19 | 2010-04-21 | 3d | Sean; Justin | 48h | 48h |
| 30 | 1.1.4.3.2 | **1.4.3.2 Plan Business Logic** | 3d | 2010-05-21 A | 2010-05-25 A | 14 | 100% | 2010-04-19 | 2010-04-23 | 5d |  | 24h | 24h |
| 31 | 1.1.4.3.2.1 | 1.4.3.2.1 Plan Model Objects/Methods | 1d | 2010-05-21 A | 2010-05-21 A |  | 100% | 2010-04-19 | 2010-04-23 | 5d | Justin | 8h | 8h |
| 32 | 1.1.4.3.2.2 | 1.4.3.2.2 Plan Form Generation Methods | 1d | 2010-05-21 A | 2010-05-21 A | 14 | 100% | 2010-04-19 | 2010-04-21 | 3d | Sean | 8h | 8h |
| 33 | 1.1.4.3.2.3 | 1.4.3.2.3 Plan Form Retrieval Methods | 1d | 2010-05-25 A | 2010-05-25 A | 14 | 100% | 2010-04-19 | 2010-04-21 | 3d | Justin | 8h | 8h |
| 34 | 1.1.4.3.2.4 | 1.4.3.2.4 Plan Report Generation Methods | 3d | 2010-05-21 A | 2010-05-25 A | 14 | 100% | 2010-04-19 | 2010-04-21 | 3d |  |  |  |
| 35 | 1.1.4.4 | **1.4.4 Intergration Design Planning** | 4d | 2010-05-28 A | 2010-06-02 A | 6, 24, 32, 33, 34, 26 | 100% | 2010-05-06 | 2010-05-10 | 3d |  | 112h | 112h |
| 36 | 1.1.4.4.1 | **1.4.4.1. Database/Backend Integration Planning** | 3d | 2010-05-28 A | 2010-06-01 A |  | 100% | 2010-05-06 | 2010-05-10 | 3d |  | 48h | 48h |
| 37 | 1.1.4.4.1.1 | 1.4.4.1.1 Plan Database Connection Objects/Methods | 3d | 2010-05-28 A | 2010-06-01 A |  | 100% | 2010-05-06 | 2010-05-10 | 3d | Justin | 24h | 24h |
| 38 | 1.1.4.4.1.2 | 1.4.4.1.2 Plan Database Query Send/Retrieve Methods | 3d | 2010-05-28 A | 2010-06-01 A | 37SS | 100% | 2010-05-06 | 2010-05-10 | 3d | Justin | 24h | 24h |
| 39 | 1.1.4.4.2 | **1.4.4.2 Backend/Web Interface Integration Planning** | 3d | 2010-05-28 A | 2010-06-01 A |  | 100% | 2010-05-06 | 2010-05-10 | 3d |  | 48h | 48h |
| 40 | 1.1.4.4.2.1 | 1.4.4.2.1 Plan Web Server Connection Objects/Methods | 3d | 2010-05-28 A | 2010-06-01 A |  | 100% | 2010-05-06 | 2010-05-10 | 3d | Jane | 24h | 24h |
| 41 | 1.1.4.4.2.2 | 1.4.4.2.2 Plan Web Server Communication Methods | 3d | 2010-05-28 A | 2010-06-01 A |  | 100% | 2010-05-06 | 2010-05-10 | 3d | Jane | 24h | 24h |
| 42 | 1.1.4.4.3 | **1.4.4.3 Web Interface Integration** | 2d | 2010-06-01 A | 2010-06-02 A | 26, 27 | 100% | 2010-05-06 | 2010-05-10 | 3d |  | 16h | 16h |
| 43 | 1.1.4.4.3.1 | 1.4.4.3.1 Plan Website Mapping | 2d | 2010-06-01 A | 2010-06-02 A | 26, 27 | 100% | 2010-05-06 | 2010-05-10 | 3d | Dell | 16h | 16h |
| 44 | 1.1.4.5 | **1.4.5 Test Design Planning** | 8d | 2010-05-21 A | 2010-06-01 A | 19, 25, 28 | 100% | 2010-05-03 | 2010-05-17 | 10.5d |  | 80h | 80h |
| 45 | 1.1.4.5.1 | 1.4.5.1 Plan Database Tests | 2d | 2010-05-21 A | 2010-05-24 A | 20, 22, 23, 24 | 100% | 2010-05-03 | 2010-05-10 | 5d | Nicholas | 16h | 16h |
| 46 | 1.1.4.5.2 | 1.4.5.2 Plan Backend Tests | 2d | 2010-05-25 A | 2010-05-26 A | 32, 33, 34 | 100% | 2010-05-03 | 2010-05-10 | 5d | Justin | 16h | 16h |
| 47 | 1.1.4.5.3 | 1.4.5.3 Plan Web Interface Tests | 2d | 2010-05-27 A | 2010-05-28 A | 43 | 100% | 2010-05-11 | 2010-05-17 | 5d | Sean | 16h | 16h |
| 48 | 1.1.4.5.4 | 1.4.5.4 Plan Integration Tests | 2d | 2010-05-31 A | 2010-06-01 A | 47 | 100% | 2010-05-11 | 2010-05-17 | 5d | Justin; Sean | 32h | 32h |

| ID | WBS | Task | Type | Duration | Start | Finish | Predecessors | Complete | Remaining | Baseline start | Baseline finish | Baseline duration | Total slack | Free slack | Constraint | Resources | Work | Actual work |
| --- | --- | --- | --- | --- | --- | --- | --- | --- | --- | --- | --- | --- | --- | --- | --- | --- | --- | --- |
| 49 | 1.1.5 | **1.5 Development Planning** |  | 5d | 2010-05-07 A | 2010-05-13 A | 6 | 100% |  | 2010-05-06 | 2010-05-12 | 5d |  |  |  |  | 200h | 200h |
| 50 | 1.1.5.1 | 1.5.1 Database Development Planning |  | 1w | 2010-05-07 A | 2010-05-13 A | 6 | 100% |  | 2010-05-06 | 2010-05-12 | 1w |  |  |  | Justin | 40h | 40h |
| 51 | 1.1.5.2 | 1.5.2 Web Interface Development Plannning |  | 1w | 2010-05-07 A | 2010-05-13 A | 6 | 100% |  | 2010-05-06 | 2010-05-12 | 1w |  |  |  | Justin | 40h | 40h |
| 52 | 1.1.5.3 | 1.5.3 Backend Develpoment Planning |  | 1w | 2010-05-07 A | 2010-05-13 A | 6 | 100% |  | 2010-05-06 | 2010-05-12 | 1w |  |  |  | Justin | 40h | 40h |
| 53 | 1.1.5.4 | 1.5.4 Integration Development Planning |  | 1w | 2010-05-07 A | 2010-05-13 A | 6 | 100% |  | 2010-05-06 | 2010-05-12 | 1w |  |  |  | Justin | 40h | 40h |
| 54 | 1.1.5.5 | 1.5.5 Test Development Planning |  | 1w | 2010-05-07 A | 2010-05-13 A | 6 | 100% |  | 2010-05-06 | 2010-05-12 | 1w |  |  |  | Justin | 40h | 40h |
| 55 | 1.1.6 | 1.1.6 Milestone: Complete Phase 2 Planning | milestone | 0d | 2010-06-03 | 2010-06-03 |  |  |  | 2010-04-15 | 2010-06-03 | 0d? | 61d |  | finish no earlier than 2010-06-03 |  |  |  |
| 56 | 1.3 | **2 Execution** |  | 50d | 2010-07-26 A | 2010-10-11 | 2 | 1% | 49.4d | 2010-09-07 | 2010-10-07 | 17d | 10d |  | start no earlier than 2010-07-26 | Group | 2160h | 33.66h |
| 57 | 1.3.1 | **2.1 Execute Design** |  | 13d | 2010-07-26 A | 2010-08-12 | 18 | 3% | 12.62d | 2010-09-08 | 2010-09-24 | 13d | 43d | 0d |  | Group | 952h | 28.84h |
| 58 | 1.3.1.1 | **2.1.1 Execute Database Design** |  | 2d | 2010-07-26 | 2010-07-27 | 19 |  |  | 2010-09-08 | 2010-09-09 | 2d | 54d | 11d |  | Justin | 64h |  |
| 59 | 1.3.1.1.1 | 2.1.1.1 Design Scripts |  | 1d | 2010-07-26 | 2010-07-26 | 20 |  |  | 2010-09-08 | 2010-09-08 | 1d | 55d | 12d |  | Nicholas | 8h |  |
| 60 | 1.3.1.1.2 | 2.1.1.2 Design ER Diagram |  | 2d | 2010-07-26 | 2010-07-27 | 21 |  |  | 2010-09-08 | 2010-09-09 | 2d | 54d | 11d |  | Nicholas | 16h |  |
| 61 | 1.3.1.1.3 | 2.1.1.3 Design Data Dictionary |  | 1d | 2010-07-26 | 2010-07-26 |  |  |  | 2010-09-08 | 2010-09-08 | 1d | 55d | 13d |  | Justin | 8h |  |
| 62 | 1.3.1.1.4 | 2.1.1.4 Design Table Mapping |  | 1d | 2010-07-26 | 2010-07-26 | 22, 23 |  |  | 2010-09-08 | 2010-09-08 | 1d | 55d | 13d |  | Justin | 8h |  |
| 63 | 1.3.1.1.5 | 2.1.1.5 Design Queries and Triggers |  | 1d | 2010-07-26 | 2010-07-26 | 24 |  |  | 2010-09-08 | 2010-09-08 | 1d | 55d | 13d |  | Justin | 8h |  |
| 64 | 1.3.1.2 | **2.1.2 Execute Web Interface Design** |  | 2d | 2010-07-26 | 2010-07-27 | 25 |  |  | 2010-09-08 | 2010-09-09 | 2d | 54d | 11d |  | Sean | 40h |  |
| 65 | 1.3.1.2.1 | 2.1.2.1 Design Forms |  | 1d | 2010-07-26 | 2010-07-26 | 26 |  |  | 2010-09-08 | 2010-09-08 | 1d | 54d | 0d |  | Nicholas | 8h |  |
| 66 | 1.3.1.2.2 | 2.1.2.2 Design Reports |  | 1d | 2010-07-26 | 2010-07-26 | 27 |  |  | 2010-09-08 | 2010-09-08 | 1d | 54d | 0d |  | Nicholas | 8h |  |
| 67 | 1.3.1.2.3 | 2.1.2.3 Design Presentation |  | 1d | 2010-07-27 | 2010-07-27 | 65, 66 |  |  | 2010-09-09 | 2010-09-09 | 1d | 54d | 11d |  | Sean | 8h |  |
| 68 | 1.3.1.3 | **2.1.3 Execute Backend Design** |  | 13d | 2010-07-26 | 2010-08-12 | 28 |  |  | 2010-09-08 | 2010-09-24 | 13d | 43d | 0d |  | Jane; Justin | 544h |  |
| 69 | 1.3.1.3.1 | 2.1.3.1 Design Data Flow |  | 2d | 2010-07-26 | 2010-07-27 | 29 |  |  | 2010-09-08 | 2010-09-09 | 2d | 43d | 0d |  | Jane; Justin | 32h |  |
| 70 | 1.3.1.3.2 | **2.1.3.2 Design Business Logic** |  | 11d | 2010-07-28 | 2010-08-12 | 30, 69 |  |  | 2010-09-10 | 2010-09-24 | 11d | 43d |  |  | Jane; Justin | 304h |  |
| 71 | 1.3.1.3.2.1 | 2.1.3.2.1 Design Model Objects/Methods |  | 1d | 2010-07-28 | 2010-07-28 | 69 |  |  | 2010-09-10 | 2010-09-10 | 1d | 53d | 10d |  | Jane; Justin | 16h |  |
| 72 | 1.3.1.3.2.2 | 2.1.3.2.2 Design Form Generation Methods |  | 4d | 2010-07-28 | 2010-08-12 | 32, 69 |  |  | 2010-09-10 | 2010-09-24 | 4d | 43d | 0d | start no earlier than 2010-05-06 | Jane; Justin | 64h |  |
| 73 | 1.3.1.3.2.3 | 2.1.3.2.3 Design Form Retrieval Methods |  | 1d | 2010-07-28 | 2010-07-28 | 33, 69 |  |  | 2010-09-10 | 2010-09-10 | 1d | 53d | 10d |  | Jane; Justin | 16h |  |
| 74 | 1.3.1.3.2.4 | 2.1.3.2.4 Design Report Generation Methods |  | 1d | 2010-07-28 | 2010-07-28 | 34, 69 |  |  | 2010-09-10 | 2010-09-10 | 1d | 53d | 10d |  | Jane; Justin | 16h |  |
| 75 | 1.3.1.3.2.5 | 2.1.3.2.5 Design Query Generation Methods |  | 1d | 2010-07-28 | 2010-07-28 | 69 |  |  | 2010-09-10 | 2010-09-10 | 1d | 53d | 10d |  | Jane; Justin | 16h |  |

| ID | WBS | Task | Duration | Start | Finish | Predecessors | Complete | Remaining | Baseline start | Baseline finish | Baseline duration | Total slack | Free slack | Resources | Work | Actual work |
| --- | --- | --- | --- | --- | --- | --- | --- | --- | --- | --- | --- | --- | --- | --- | --- | --- |
| 76 | 1.3.1.4 | **2.1.4 Execute Integration Design** | 2d | 2010-07-26 A | 2010-07-27 | 35 | 11% | 1.78d | 2010-09-08 | 2010-09-09 | 2d | 54d | 11d | Jane | 136h | 25.78h |
| 77 | 1.3.1.4.1 | **2.1.4.1 Design Database/Backend Integration** | 2d | 2010-07-26 | 2010-07-27 |  |  |  | 2010-09-08 | 2010-09-09 | 2d | 54d | 11d | Jane | 48h |  |
| 78 | 1.3.1.4.1.1 | 2.1.4.1.1 Design Database Connection Objects/Methods | 2d | 2010-07-26 | 2010-07-27 |  |  |  | 2010-09-08 | 2010-09-09 | 2d | 54d | 11d | Justin | 16h |  |
| 79 | 1.3.1.4.1.2 | 2.1.4.1.2 Design Database Query Send/Retrieve Methods | 2d | 2010-07-26 | 2010-07-27 |  |  |  | 2010-09-08 | 2010-09-09 | 2d | 54d | 11d | Justin | 16h |  |
| 80 | 1.3.1.4.2 | **2.1.4.2 Design Backend/Web Interface Integration** | 2d | 2010-07-26 | 2010-07-27 |  |  |  | 2010-09-08 | 2010-09-09 | 2d | 54d | 11d | Jane | 48h |  |
| 81 | 1.3.1.4.2.1 | 2.1.4.2.1 Design Web Server Connection Objects/Methods | 2d | 2010-07-26 | 2010-07-27 | 40 |  |  | 2010-09-08 | 2010-09-09 | 2d | 54d | 11d | Sean | 16h |  |
| 82 | 1.3.1.4.2.2 | 2.1.4.2.2 Design Web Server Communication Methods | 2d | 2010-07-26 | 2010-07-27 |  |  |  | 2010-09-08 | 2010-09-09 | 2d | 54d | 11d | Sean | 16h |  |
| 83 | 1.3.1.4.3 | **2.1.4.3 Design Interface Integration** | 1d | 2010-07-26 A | 2010-07-26 A | 42 | 100% |  | 2010-09-08 | 2010-09-08 | 1d |  |  | Jane; Justin | 24h | 24h |
| 84 | 1.3.1.4.3.1 | 2.1.4.3.1 Design Website Mapping | 1d | 2010-07-26 A | 2010-07-26 A | 43 | 100% |  | 2010-09-08 | 2010-09-08 | 1d |  |  | Dell | 8h | 8h |
| 85 | 1.3.1.5 | **2.1.5 Execute Test Design** | 2d | 2010-07-26 | 2010-07-27 | 44 |  |  | 2010-09-08 | 2010-09-09 | 2d | 54d | 11d | Nicholas | 64h |  |
| 86 | 1.3.1.5.1 | 2.1.5.1 Design Unit Tests | 2d | 2010-07-26 | 2010-07-27 | 45, 46 |  |  | 2010-09-08 | 2010-09-09 | 2d | 54d | 11d | Sean | 16h |  |
| 87 | 1.3.1.5.2 | 2.1.5.2 Design Functionality Tests | 2d | 2010-07-26 | 2010-07-27 | 45, 46, 47 |  |  | 2010-09-08 | 2010-09-09 | 2d | 54d | 11d | Sean | 16h |  |
| 88 | 1.3.1.5.3 | 2.1.5.3 Design Requirements Tests | 2d | 2010-07-26 | 2010-07-27 | 45, 46, 47 |  |  | 2010-09-08 | 2010-09-09 | 2d | 54d | 11d | Sean | 16h |  |
| 89 | 1.3.2 | **2.2 Execute Development** | 4d | 2010-08-13 | 2010-08-18 | 57 |  |  | 2010-10-04 | 2010-10-07 | 4d | 43d |  | Justin | 808h |  |
| 90 | 1.3.2.1 | **2.2.1 Database Develpoment** | 4d | 2010-08-13 | 2010-08-18 | 58 |  |  | 2010-10-04 | 2010-10-07 | 4d | 43d |  | Justin | 80h |  |
| 91 | 1.3.2.1.1 | 2.2.1.1 Develop Scripts | 1d | 2010-08-13 | 2010-08-13 | 59 |  |  | 2010-10-04 | 2010-10-04 | 1d | 43d | 0d | Justin | 8h |  |
| 92 | 1.3.2.1.2 | 2.2.1.2 Develop Database | 3d | 2010-08-16 | 2010-08-18 | 91, 60, 61, 62, 63 |  |  | 2010-10-05 | 2010-10-07 | 3d | 43d |  | Justin | 24h |  |
| 93 | 1.3.2.1.3 | 2.2.1.3 Develop Triggers | 2d | 2010-08-13 | 2010-08-16 | 60 |  |  | 2010-10-04 | 2010-10-05 | 2d | 45d |  | Nicholas | 16h |  |
| 94 | 1.3.2.2 | **2.2.2 Execute Web Interface Development** | 3d | 2010-08-13 | 2010-08-17 | 64 |  |  | 2010-10-04 | 2010-10-06 | 3d | 44d |  | Sean | 72h |  |
| 95 | 1.3.2.2.1 | 2.2.2.1 Develop Forms | 3d | 2010-08-13 | 2010-08-17 | 67 |  |  | 2010-10-04 | 2010-10-06 | 3d | 44d |  | Sean | 24h |  |
| 96 | 1.3.2.2.2 | 2.2.2.2 Develop Reports | 3d | 2010-08-13 | 2010-08-17 | 67 |  |  | 2010-10-04 | 2010-10-06 | 3d | 44d |  | Sean | 24h |  |
| 97 | 1.3.2.3 | **2.2.3 Execute Backend Development** | 3d | 2010-08-13 | 2010-08-17 | 68 |  |  | 2010-10-04 | 2010-10-06 | 3d | 44d |  | Jane; Justin | 288h |  |
| 98 | 1.3.2.3.1 | 2.2.3.1 Develop Model Objects/Methods | 3d | 2010-08-13 | 2010-08-17 | 71 |  |  | 2010-10-04 | 2010-10-06 | 3d | 44d |  | Jane; Justin | 48h |  |
| 99 | 1.3.2.3.2 | 2.2.3.2 Develop Form Generation Methods | 3d | 2010-08-13 | 2010-08-17 | 72 |  |  | 2010-10-04 | 2010-10-06 | 3d | 44d |  | Jane; Justin | 48h |  |
| 100 | 1.3.2.3.3 | 2.2.3.3 Develop Form Retrieval Methods | 3d | 2010-08-13 | 2010-08-17 | 73 |  |  | 2010-10-04 | 2010-10-06 | 3d | 44d |  | Jane; Justin | 48h |  |
| 101 | 1.3.2.3.4 | 2.2.3.4 Develop Report Generation Methods | 3d | 2010-08-13 | 2010-08-17 | 74 |  |  | 2010-10-04 | 2010-10-06 | 3d | 44d |  | Jane; Justin | 48h |  |
| 102 | 1.3.2.3.5 | 2.2.3.5 Develop Query Generation Methods | 3d | 2010-08-13 | 2010-08-17 | 75 |  |  | 2010-10-04 | 2010-10-06 | 3d | 44d |  | Jane; Justin | 48h |  |

| ID | WBS | Task | Type | Duration | Start | Finish | Predecessors | Complete | Remaining | Baseline start | Baseline finish | Baseline duration | Total slack | Free slack | Constraint | Resources | Work | Actual work |
| --- | --- | --- | --- | --- | --- | --- | --- | --- | --- | --- | --- | --- | --- | --- | --- | --- | --- | --- |
| 103 | 1.3.2.4 | **2.2.4 Execute Integration Development** |  | 3d | 2010-08-13 | 2010-08-17 | 76 |  |  | 2010-10-04 | 2010-10-06 | 3d | 44d |  |  | Sean | 248h |  |
| 104 | 1.3.2.4.1 | **2.2.4.1 Develop Database/Backened Integration** |  | 3d | 2010-08-13 | 2010-08-17 | 77 |  |  | 2010-10-04 | 2010-10-06 | 3d | 44d |  |  | Sean | 72h |  |
| 105 | 1.3.2.4.1.1 | 2.2.4.1.1 Develop Database Connection Objects/Methods |  | 3d | 2010-08-13 | 2010-08-17 | 78 |  |  | 2010-10-04 | 2010-10-06 | 3d | 44d |  |  | Sean | 24h |  |
| 106 | 1.3.2.4.1.2 | 2.2.4.1.2 Develop Database Query Send/Retrieve Methods |  | 3d | 2010-08-13 | 2010-08-17 | 79 |  |  | 2010-10-04 | 2010-10-06 | 3d | 44d |  |  | Sean | 24h |  |
| 107 | 1.3.2.4.2 | **2.2.4.2 Develop Backend/Web Interface Integration** |  | 3d | 2010-08-13 | 2010-08-17 | 80 |  |  | 2010-10-04 | 2010-10-06 | 3d | 44d |  |  | Jane; Justin | 120h |  |
| 108 | 1.3.2.4.2.1 | 2.2.4.2.1 Develop Web Server Connection Objects/Methods |  | 3d | 2010-08-13 | 2010-08-17 | 81 |  |  | 2010-10-04 | 2010-10-06 | 3d | 44d |  |  | Jane; Justin | 48h |  |
| 109 | 1.3.2.4.2.2 | 2.2.4.2.2 Develop Web Server Communication Methods |  | 3d | 2010-08-13 | 2010-08-17 | 82 |  |  | 2010-10-04 | 2010-10-06 | 3d | 44d |  |  | Sean | 24h |  |
| 110 | 1.3.2.4.3 | **2.2.4.3 Develop Web Interface Integration** |  | 2d | 2010-08-13 | 2010-08-16 | 83 |  |  | 2010-10-04 | 2010-10-05 | 2d | 45d |  |  | Sean | 32h |  |
| 111 | 1.3.2.4.3.1 | 2.2.4.3.1 Develop Website Mapping |  | 2d | 2010-08-13 | 2010-08-16 | 84 |  |  | 2010-10-04 | 2010-10-05 | 2d | 45d |  |  | Sean | 16h |  |
| 112 | 1.3.2.5 | **2.2.5 Execute Test Development** |  | 3d | 2010-08-13 | 2010-08-17 | 85 |  |  | 2010-10-04 | 2010-10-06 | 3d | 44d |  |  | Nicholas | 88h |  |
| 113 | 1.3.2.5.1 | 2.2.5.1 Unit Tests |  | 2d | 2010-08-13 | 2010-08-16 | 86 |  |  | 2010-10-04 | 2010-10-05 | 2d | 45d |  |  | Nicholas | 16h |  |
| 114 | 1.3.2.5.2 | 2.2.5.2 Functionality Tests |  | 3d | 2010-08-13 | 2010-08-17 | 87 |  |  | 2010-10-04 | 2010-10-06 | 3d | 44d |  |  | Nicholas | 24h |  |
| 115 | 1.3.2.5.3 | 2.2.5.3 Requirements Tests |  | 3d | 2010-08-13 | 2010-08-17 | 88 |  |  | 2010-10-04 | 2010-10-06 | 3d | 44d |  |  | Nicholas | 24h |  |
| 116 | 1.3.3 | Milestone: Complete Phase 3 Execution | milestone | 0d | 2010-10-11 | 2010-10-11 |  |  |  | 2010-09-07 | 2010-09-07 | 0d | 10d |  | finish no earlier than 2010-10-11 |  |  |  |
| 117 | 1.4 | **3 Controlling** |  | 87d | 2010-04-15 A | 2010-10-11 |  | 26% | 64.66d | 2010-04-15 | 2010-10-11 | 87d | -2d | 0d |  | Group | 2096h | 581.83h |
| 118 | 1.4.1 | **3.1 Have Meetings** |  | 1d | 2010-04-15 | 2010-04-15 |  |  |  | 2010-04-15 | 2010-04-15 | 1d | 84d |  |  | Group | 16h |  |
| 119 | 1.4.1.1 | 3.1.1 Take Minutes |  | 1d | 2010-04-15 | 2010-04-15 |  |  |  | 2010-04-15 | 2010-04-15 | 1d | 84d |  |  | rotation | 8h |  |
| 120 | 1.4.2 | **3.2 Progress Management** |  | 3d | 2010-04-15 | 2010-04-19 |  |  |  | 2010-04-15 | 2010-04-19 | 3d | 82d | 0d |  | Dell; Jane | 120h |  |
| 121 | 1.4.2.1 | 3.2.1 Project Status Reports |  | 3d | 2010-04-15 | 2010-04-19 |  |  |  | 2010-04-15 | 2010-04-19 | 3d | 82d |  |  | Dell | 24h |  |
| 122 | 1.4.2.2 | 3.2.2 Project Performance Reports |  | 3d | 2010-04-15 | 2010-04-19 |  |  |  | 2010-04-15 | 2010-04-19 | 3d | 82d |  |  | Dell | 24h |  |
| 123 | 1.4.2.3 | 3.2.3 Project Forcasting |  | 3d | 2010-04-15 | 2010-04-19 |  |  |  | 2010-04-15 | 2010-04-19 | 3d | 82d |  |  | Dell | 24h |  |
| 124 | 1.4.3 | **3.3 Change Management** |  | 3d | 2010-04-15 | 2010-04-19 | 120SS |  |  | 2010-04-15 | 2010-04-19 | 3d | 82d | 0d |  | Dell | 48h |  |
| 125 | 1.4.3.1 | 3.3.1 Change Request Documentation |  | 1d | 2010-04-15 | 2010-04-15 |  |  |  | 2010-04-15 | 2010-04-15 | 1d | 82d | 0d |  | person requesting change | 8h |  |
| 126 | 1.4.3.2 | 3.3.2 Change Request Review |  | 1d | 2010-04-16 | 2010-04-16 | 125 |  |  | 2010-04-16 | 2010-04-16 | 1d | 82d | 0d |  | Group | 8h |  |
| 127 | 1.4.3.3 | 3.3.3 Change Request Approval |  | 1d | 2010-04-19 | 2010-04-19 | 126 |  |  | 2010-04-19 | 2010-04-19 | 1d | 82d |  |  | Dell & key stakeholder | 8h |  |

| ID | WBS | Task | Duration | Start | Finish | Predecessors | Complete | Remaining | Baseline start | Baseline finish | Baseline duration | Total slack | Free slack | Constraint | Deadline | Resources | Work | Actual work |
| --- | --- | --- | --- | --- | --- | --- | --- | --- | --- | --- | --- | --- | --- | --- | --- | --- | --- | --- |
| 128 | 1.4.4 | **3.4 Deliverables Management** | 15d | 2010-04-15 | 2010-05-05 | 124SS |  |  | 2010-04-15 | 2010-05-05 | 15d | 70d |  |  |  | Group | 240h |  |
| 129 | 1.4.4.1 | 3.4.1 Draft | 1w | 2010-04-15 | 2010-04-21 |  |  |  | 2010-04-15 | 2010-04-21 | 1w | 70d | 0d |  |  | Group | 40h |  |
| 130 | 1.4.4.2 | 3.4.2 Review | 1w | 2010-04-22 | 2010-04-28 | 129 |  |  | 2010-04-22 | 2010-04-28 | 1w | 70d | 0d |  |  | Group | 40h |  |
| 131 | 1.4.4.3 | 3.4.3 Finalize | 1w | 2010-04-29 | 2010-05-05 | 130 |  |  | 2010-04-29 | 2010-05-05 | 1w | 70d |  |  |  | Group | 40h |  |
| 132 | 1.4.5 | **3.5 Project Reporting** | 76d | 2010-04-30 A | 2010-10-11 |  | 41% | 44.61d | 2010-04-30 | 2010-10-11 | 76d | -2d | 0d |  |  | Dell | 976h | 403.13h |
| 133 | 1.4.5.1 | 3.5.1 Project Reporting 1 | 5d | 2010-04-30 A | 2010-05-06 A |  | 100% |  | 2010-04-30 | 2010-05-06 | 5d |  |  | finish no earlier than 2010-05-06 |  | Justin & Group | 40h | 40h |
| 134 | 1.4.5.2 | 3.5.2 Project Reporting 2 | 5d | 2010-05-14 A | 2010-05-20 A | 133 | 100% |  | 2010-05-14 | 2010-05-20 | 5d |  |  | finish no earlier than 2010-05-20 |  | Dell & Group | 40h | 40h |
| 135 | 1.4.5.3 | 3.5.3 Project Reporting 3 | 6d | 2010-05-27 A | 2010-06-03 A | 134 | 100% |  | 2010-05-27 | 2010-06-03 | 6d |  |  | finish no earlier than 2010-06-03 |  | Dell & Group | 48h | 48h |
| 136 | 1.4.5.4 | 3.5.4 Project Reporting 4 | 5d | 2010-06-01 A | 2010-07-26 | 135 | 60% | 2d | 2010-06-01 | 2010-07-26 | 5d | 22d | 0d | finish no earlier than 2010-07-26 |  | Dell & Group | 40h | 24h |
| 137 | 1.4.5.5 | 3.5.5 Project Reporting 5 | 5d | 2010-08-03 | 2010-08-09 | 136 |  |  | 2010-08-03 | 2010-08-09 | 5d | 17d | 0d | finish no earlier than 2010-08-09 |  | Dell & Group | 40h |  |
| 138 | 1.4.5.6 | 3.5.6 Project Reporting 6 | 5d | 2010-08-17 | 2010-08-23 | 137 |  |  | 2010-08-17 | 2010-08-23 | 5d | 13d | 5d | finish no earlier than 2010-08-23 |  | Dell & Group | 40h |  |
| 139 | 1.4.5.7 | 3.5.7 Project Reporting 7 | 5d | 2010-08-31 | 2010-09-06 | 138 |  |  | 2010-08-31 | 2010-09-06 | 5d | 8d |  | finish no earlier than 2010-09-06 |  | Dell & Group | 40h |  |
| 140 | 1.4.5.8 | 3.5.8 Project Reporting 8 | 5d | 2010-09-14 | 2010-09-20 | 139 |  |  | 2010-09-14 | 2010-09-20 | 5d | 3d |  | finish no earlier than 2010-09-20 |  | Dell & Group | 40h |  |
| 141 | 1.4.5.9 | 3.5.9 Project Reporting 9 | 5d | 2010-10-05 | 2010-10-11 | 140 |  |  | 2010-10-05 | 2010-10-11 | 5d | -2d | 0d | finish no earlier than 2010-10-11 |  | Dell & Group | 40h |  |
| 142 | 1.5 | **4 Project Deliverables** | 97d | 2010-04-15 A | 2010-10-25 |  | 43% | 55.11d | 2010-10-11 | 2010-10-25 | 10d | 0d |  |  |  | Xing | 2104h | 679.09h |
| 143 | 1.5.1 | **4.1 Planning Phase** | 24d | 2010-05-03 A | 2010-06-03 |  | 90% | 2.29d | 2010-10-12 | 2010-10-21 | 8d | 61d |  |  |  | Xing | 360h | 344h |
| 144 | 1.5.1.1 | 4.1.1 Project Plan | 4d | 2010-05-03 A | 2010-05-06 A | 133FF | 100% |  | 2010-10-12 | 2010-10-15 | 4d |  |  | finish no earlier than 2010-05-06 |  | Xing & Group | 32h | 32h |
| 145 | 1.5.1.2 | 4.1.2 Software Requirements Specification | 8d | 2010-05-11 A | 2010-05-20 A | 134FF | 100% |  | 2010-10-12 | 2010-10-21 | 8d |  |  | finish no earlier than 2010-05-20 |  | Xing | 64h | 64h |
| 146 | 1.5.1.3 | 4.1.3 Entity Relationship Diagram | 4d | 2010-05-24 A | 2010-05-27 A | 135FF, 60 | 100% |  | 2010-10-12 | 2010-10-12 | 1d |  |  | finish no earlier than 2010-06-03 | 2010-06-03 | Jane | 32h | 32h |
| 147 | 1.5.1.4 | 4.1.4 Test Cases and Results | 2d | 2010-06-02 | 2010-06-03 | 146FF |  |  | 2010-10-12 | 2010-10-13 | 2d | 61d |  | finish no earlier than 2010-06-03 |  | Nicholas | 16h |  |
| 148 | 1.5.1.5 | 4.1.5 Recovery Scripts and Demonstration of the Working Components | 1d | 2010-06-03 A | 2010-06-03 A |  | 100% |  | 2010-10-12 | 2010-10-12 | 1d |  |  | finish no earlier than 2010-06-03 |  | Justin | 8h | 8h |
| 149 | 1.5.1.6 | 4.1.6 Reflective Review | 2d | 2010-05-27 A | 2010-05-28 A |  | 100% |  | 2010-10-12 | 2010-10-12 | 1d |  |  |  |  | Group | 16h | 16h |
| 150 | 1.5.2 | **4.2 Execution and Controlling Phase** | 87d | 2010-04-15 | 2010-10-11 |  |  |  | 2010-10-12 | 2010-10-15 | 4d | 10d |  |  |  | Xing | 880h |  |
| 151 | 1.5.2.1 | 4.2.1 Individual Component(s) Agreement | 1d | 2010-07-26 | 2010-07-26 | 136FF |  |  | 2010-10-12 | 2010-10-12 | 1d | 59d |  | finish no earlier than 2010-07-26 |  | Xing | 8h |  |
| 152 | 1.5.2.2 | 4.2.2 Test Plan | 2d | 2010-08-06 | 2010-08-09 | 137FF, 44 |  |  | 2010-10-12 | 2010-10-13 | 2d | 49d |  | finish no earlier than 2010-08-02 |  | Xing; Nicholas | 32h |  |
| 153 | 1.5.2.3 | 4.2.3 Demonstration of the Individual Components | 1d | 2010-04-15 | 2010-04-15 |  |  |  | 2010-10-12 | 2010-10-12 | 1d | 56d |  |  | 2010-08-23 | individual | 8h |  |
| 154 | 1.5.2.4 | 4.2.4 Proven Use of Project Plan and SRS | 1d | 2010-04-15 | 2010-04-15 |  |  |  | 2010-10-12 | 2010-10-12 | 1d | 66d |  | finish no later than 2010-09-06 |  | Xing | 8h |  |
| 155 | 1.5.2.5 | 4.2.5 Project Analysis Presentation | 4d | 2010-04-15 | 2010-04-20 |  |  |  | 2010-10-12 | 2010-10-15 | 4d | 93d |  |  |  | Xing | 32h |  |
| 156 | 1.5.2.6 | 4.2.6 Final Project Folder | 4d | 2010-10-06 | 2010-10-11 | 141FF |  |  | 2010-10-12 | 2010-10-15 | 4d | 10d | 0d |  |  | Xing & Group | 32h |  |

| ID | WBS | Task | Type | Duration | Start | Finish | Predecessors | Baseline start | Baseline finish | Baseline duration | Total slack | Free slack | Constraint | Deadline | Resources | Work |
| --- | --- | --- | --- | --- | --- | --- | --- | --- | --- | --- | --- | --- | --- | --- | --- | --- |
| 157 | 1.5.2.7 | **4.2.7 User Manual** |  | 2d | 2010-10-08 | 2010-10-11 |  | 2010-10-14 | 2010-10-15 | 2d | 10d |  |  |  | Xing | 48h |
| 158 | 1.5.2.7.1 | 4.2.7.1 Complete User Manual |  | 2d | 2010-10-08 | 2010-10-11 | 156FF, 57 | 2010-10-14 | 2010-10-15 | 2d | 10d | 0d |  |  | Xing | 16h |
| 159 | 1.5.2.7.2 | 4.2.7.2 Complete System Manual |  | 2d | 2010-10-08 | 2010-10-11 | 158FF, 57 | 2010-10-14 | 2010-10-15 | 2d | 10d | 0d |  |  | Xing | 16h |
| 160 | 1.5.2.8 | 4.2.8 Demonstration of the Full Working System |  | 1d | 2010-04-15 | 2010-04-15 |  | 2010-10-12 | 2010-10-12 | 1d | 96d |  |  |  | Group | 8h |
| 161 | 1.5.2.9 | 4.2.9 Demonstration Agenda Sheet |  | 1d | 2010-10-11 | 2010-10-11 | 159FF, 118 | 2010-10-15 | 2010-10-15 | 1d | 10d |  | finish no earlier than 2010-10-11 |  | Xing | 8h |
| 162 | 1.5.3 | **4.3 Closing & Evaluating Phase** |  | 7d | 2010-10-15 | 2010-10-25 | 117 | 2010-10-15 | 2010-10-25 | 7d | -5d | 0d |  |  | Xing | 88h |
| 163 | 1.5.3.1 | 4.3.1 Post Implementation Review |  | 2d | 2010-10-15 | 2010-10-18 |  | 2010-10-15 | 2010-10-18 | 2d | -5d | 0d | finish no earlier than 2010-10-18 | 2010-10-11 | Group | 16h |
| 164 | 1.5.3.2 | 4.3.2 Relective Review |  | 2d | 2010-10-22 | 2010-10-25 |  | 2010-10-22 | 2010-10-25 | 2d | 0d |  | finish no earlier than 2010-10-25 |  | Group | 16h |
| 165 | 1.5.4 | Milestone: Complete Phase 4 | milestone | 0d | 2010-10-25 | 2010-10-25 |  | 2010-10-25 | 2010-10-25 | 0d | 0d |  | finish no earlier than 2010-10-25 |  |  |  |
| 166 | 1.5.5 | Milestone: Demonstration of Individual Components Complete | milestone | 0d | 2010-08-23 | 2010-08-23 |  | 2010-10-11 | 2010-10-11 | 0d | 40d |  | finish no earlier than 2010-08-23 |  |  |  |
| 167 | 1.5.6 | Milestone: Demonstration full working System | milestone | 0d | 2010-10-11 | 2010-10-11 |  | 2010-10-11 | 2010-10-11 | 0d | 11d |  | start no earlier than 2010-10-11 |  |  |  |
